# V4后台开发计划

Schedule from MS Project, 2012-02-20 to 2012-04-06, status date 2012-02-24, A marks actual dates.

## Calendars

- 标准: Mon-Fri 08:00-12:00, 13:00-17:00; Sat-Sun off. Exceptions (off unless hours are given): 2012-03-31 09:00-17:30 (清明调休上班第一天), 2012-04-01 09:00-17:30 (清明调休上班第二天), 2012-04-02 (清明第一天), 2012-04-03 (清明第二天), 2012-04-04 (清明第三天).

## Resources

| Resource |
| --- |
| 游毅明 |
| 程新兴 |
| 蒋根亮 |
| 王宏毅 |
| 孟诗佳 |
| 隆楚雄 |
| 陈波 |

## Schedule

| ID | WBS | Task | Duration | Start | Finish | Predecessors | Complete | Remaining | Total slack | Free slack | Resources | Work | Actual work | 任务进度状态 |
| --- | --- | --- | --- | --- | --- | --- | --- | --- | --- | --- | --- | --- | --- | --- |
| 1 | 1 | **一卡通V4后台开发** | 33.75d? | 2012-02-20 08:00 A | 2012-04-06 14:00 |  | 17% | 27.88d? | 0d |  |  | 1024h | 178.2h |  |
| 2 | 1.1 | **系统管理** | 4.25d | 2012-02-20 08:00 A | 2012-02-24 10:00 |  | 90% | 0.42d | 0d |  |  | 150h | 135h |  |
| 3 | 1.1.1 | 操作员登录登出 | 0.75d | 2012-02-20 08:00 A | 2012-02-20 15:00 |  | 90% | 0.07d | 3.15d | 0d | 王宏毅 | 6h | 5.4h | No BL |
| 4 | 1.1.2 | 登录站点维护 | 0.75d | 2012-02-20 15:00 A | 2012-02-21 12:00 | 3 | 90% | 0.07d | 2.48d | 0d | 王宏毅 | 6h | 5.4h | No BL |
| 5 | 1.1.3 | 网点信息维护 | 0.75d | 2012-02-21 13:00 A | 2012-02-22 10:00 | 4 | 90% | 0.07d | 1.8d | 0d | 王宏毅 | 6h | 5.4h | No BL |
| 6 | 1.1.4 | 操作员维护 | 1d | 2012-02-22 10:00 A | 2012-02-23 10:00 | 5 | 90% | 0.1d | 0.9d | 0d | 王宏毅 | 8h | 7.2h | No BL |
| 7 | 1.1.5 | 操作员与登录站点绑定 | 0.75d | 2012-02-23 10:00 A | 2012-02-23 17:00 | 6 | 90% | 0.07d | 0.23d | 0d | 王宏毅 | 6h | 5.4h | No BL |
| 8 | 1.1.6 | 充值操作员维护 | 1d | 2012-02-20 08:00 A | 2012-02-20 17:00 |  | 90% | 0.1d | 3.05d | 0d | 游毅明 | 8h | 7.2h | No BL |
| 9 | 1.1.7 | 充值操作员与卡绑定 | 1d | 2012-02-21 08:00 A | 2012-02-21 17:00 | 8 | 90% | 0.1d | 2.15d | 0d | 游毅明 | 8h | 7.2h | No BL |
| 10 | 1.1.8 | 操作员密码维护 | 0.25d | 2012-02-24 08:00 A | 2012-02-24 10:00 | 7 | 90% | 0.03d | 0d |  | 王宏毅 | 2h | 1.8h | No BL |
| 11 | 1.1.9 | 日志查询 | 0.25d | 2012-02-20 08:00 A | 2012-02-20 10:00 |  | 90% | 0.03d | 3.67d | 0d | 隆楚雄 | 2h | 1.8h | No BL |
| 12 | 1.1.10 | 子系统信息维护 | 0.75d | 2012-02-20 08:00 A | 2012-02-20 15:00 |  | 90% | 0.07d | 3.35d | 0d | 蒋根亮 | 6h | 5.4h | No BL |
| 13 | 1.1.11 | 通用前置参数维护 | 0.75d | 2012-02-20 15:00 A | 2012-02-21 12:00 | 12 | 90% | 0.07d | 2.67d | 0d | 蒋根亮 | 6h | 5.4h | No BL |
| 14 | 1.1.12 | 外接系统名单同步查询 | 0.75d | 2012-02-21 13:00 A | 2012-02-22 10:00 | 13 | 90% | 0.07d | 2d |  | 蒋根亮 | 6h | 5.4h | No BL |
| 15 | 1.1.13 | 数据字典维护 | 0.75d | 2012-02-20 08:00 A | 2012-02-20 15:00 |  | 90% | 0.07d | 3.2d | 0d | 陈波 | 6h | 5.4h | No BL |
| 16 | 1.1.14 | 全局参数维护 | 0.75d | 2012-02-20 15:00 A | 2012-02-21 12:00 | 15 | 90% | 0.07d | 2.52d | 0d | 陈波 | 6h | 5.4h | No BL |
| 17 | 1.1.15 | 收费类别维护 | 0.75d | 2012-02-20 08:00 A | 2012-02-20 15:00 |  | 90% | 0.07d | 3.27d | 0d | 程新兴 | 6h | 5.4h | No BL |
| 18 | 1.1.16 | 脱机水价信息维护 | 0.75d | 2012-02-23 08:00 A | 2012-02-23 15:00 | 23 | 90% | 0.07d | 0.5d |  | 陈波 | 6h | 5.4h | No BL |
| 19 | 1.1.17 | 交易收费信息维护 | 0.75d | 2012-02-20 15:00 A | 2012-02-21 12:00 | 17 | 90% | 0.07d | 2.6d | 0d | 程新兴 | 6h | 5.4h | No BL |
| 20 | 1.1.18 | 卡类别维护 | 0.75d | 2012-02-21 13:00 A | 2012-02-22 10:00 | 19 | 90% | 0.07d | 1.93d | 0d | 程新兴 | 6h | 5.4h | No BL |
| 21 | 1.1.19 | 发卡权限维护 | 0.75d | 2012-02-22 10:00 A | 2012-02-22 17:00 | 20 | 90% | 0.07d | 1.25d |  | 程新兴 | 6h | 5.4h | No BL |
| 22 | 1.1.20 | 钱包信息维护 | 0.75d | 2012-02-21 13:00 A | 2012-02-22 10:00 | 16 | 90% | 0.07d | 1.85d | 0d | 陈波 | 6h | 5.4h | No BL |
| 23 | 1.1.21 | 卡物理类型维护 | 0.75d | 2012-02-22 10:00 A | 2012-02-22 17:00 | 22 | 90% | 0.07d | 1.18d | 0d | 陈波 | 6h | 5.4h | No BL |
| 24 | 1.1.22 | 系统消息维护 | 0.75d | 2012-02-20 10:00 A | 2012-02-20 17:00 | 11 | 90% | 0.07d | 3d | 0d | 隆楚雄 | 6h | 5.4h | No BL |
| 25 | 1.1.23 | 组织结构维护 | 1d | 2012-02-21 08:00 A | 2012-02-21 17:00 | 24 | 90% | 0.1d | 2.1d | 0d | 隆楚雄 | 8h | 7.2h | No BL |
| 26 | 1.1.24 | 专业信息维护 | 0.75d | 2012-02-22 08:00 A | 2012-02-22 15:00 | 25 | 90% | 0.07d | 1.43d | 0d | 隆楚雄 | 6h | 5.4h | No BL |
| 27 | 1.1.25 | 校区维护 | 0.75d | 2012-02-22 15:00 A | 2012-02-23 12:00 | 26 | 90% | 0.07d | 0.75d |  | 隆楚雄 | 6h | 5.4h | No BL |

Notes:
- 4: 登录站点增、删、改、查
- 5: 网点信息增、删、改、查
- 6: 操作员增加、注销、修改、查询
- 7: 操作员与登录站点绑定关系的增、删、改、查
- 8: 充值操作员授权与查询
- 9: 充值操作员与卡绑定关系的增、删、改、查
- 10: 操作员密码修改，重置
- 12: 子系统信息的增、删、改、查
- 13: 通用前置参数的增、删、改、查
- 15: 数据字典增、删、改、查
- 16: 全局参数修改、查询
- 17: 收费类别信息增、删、改、查
- 18: 脱机水价信息增、删、改、查
- 19: 交易收费信息增、删、改、查
- 20: 卡类别信息增、删、改、查
- 21: 发卡权限增、删、改、查
- 22: 钱包信息增、删、改、查
- 23: 卡物理类型增、删、改、查
- 24: 系统消息的修改，删除，查询
- 25: 组织结构的增、删、改、查
- 26: 专业信息的增、删、改、查
- 27: 校区的增、删、改、查

| ID | WBS | Task | Duration | Start | Finish | Predecessors | Complete | Remaining | Total slack | Free slack | Resources | Work | Actual work | 任务进度状态 |
| --- | --- | --- | --- | --- | --- | --- | --- | --- | --- | --- | --- | --- | --- | --- |
| 28 | 1.2 | **设备管理** | 3d? | 2012-02-20 08:00 A | 2012-02-22 17:00 |  | 90% | 0.3d? | 1.25d |  |  | 30h | 27h |  |
| 29 | 1.2.1 | 设备基本信息维护 | 0.75d? | 2012-02-20 08:00 A | 2012-02-20 15:00 |  | 90% | 0.07d? | 3.3d | 0d | 孟诗佳 | 6h | 5.4h | No BL |
| 30 | 1.2.2 | 设备导入管理 | 1.25d? | 2012-02-20 15:00 A | 2012-02-21 17:00 | 29 | 90% | 0.12d? | 2.17d | 0d | 孟诗佳 | 10h | 9h | No BL |
| 31 | 1.2.3 | 设备更换 | 0.75d? | 2012-02-22 08:00 A | 2012-02-22 15:00 | 30 | 90% | 0.07d? | 1.5d |  | 孟诗佳 | 6h | 5.4h | No BL |
| 32 | 1.2.4 | 设备参数控制 | 1d? | 2012-02-22 08:00 A | 2012-02-22 17:00 | 9 | 90% | 0.1d? | 1.25d |  | 游毅明 | 8h | 7.2h | No BL |
| 33 | 1.3 | **客户管理** | 3d? | 2012-02-24 10:00 A | 2012-02-29 10:00 | 2, 28 | 17% | 2.48d? | 0d |  |  | 62h | 10.8h |  |
| 34 | 1.3.1 | 客户类别维护 | 0.75d? | 2012-02-24 10:00 A | 2012-02-24 17:00 |  | 90% | 0.07d? | 0.25d | 0d | 隆楚雄 | 6h | 5.4h | No BL |
| 35 | 1.3.2 | 客户基本信息维护 | 0.75d? | 2012-02-27 08:00 | 2012-02-27 15:00 | 34 |  |  | 0.25d | 0d | 隆楚雄 | 6h |  | No BL |
| 36 | 1.3.3 | 客户信息导入管理 | 1.25d? | 2012-02-27 15:00 | 2012-02-28 17:00 | 35 |  |  | 0.25d |  | 隆楚雄 | 10h |  | No BL |
| 37 | 1.3.4 | 学工号批量修改 | 0.75d? | 2012-02-24 10:00 A | 2012-02-24 17:00 |  | 90% | 0.07d? | 0d |  | 孟诗佳 | 6h | 5.4h | No BL |
| 38 | 1.3.5 | 客户信息批量修改 | 1d? | 2012-02-27 08:00 | 2012-02-27 17:00 | 37 |  |  | 0d |  | 孟诗佳 | 8h |  | No BL |
| 39 | 1.3.6 | 新生换卡名单导入管理 | 1.25d? | 2012-02-28 08:00 | 2012-02-29 10:00 | 38 |  |  | 0d |  | 孟诗佳 | 10h |  | No BL |
| 40 | 1.3.7 | 银行卡绑定关系管理 | 1d? | 2012-02-24 10:00 | 2012-02-27 10:00 |  |  |  | 1d | 0d | 游毅明 | 8h |  | No BL |
| 41 | 1.3.8 | 银行卡联机绑定关系管理 | 1d? | 2012-02-27 10:00 | 2012-02-28 10:00 | 40 |  |  | 1d |  | 游毅明 | 8h |  | No BL |
| 42 | 1.4 | **商户管理** | 3d? | 2012-02-24 10:00 A | 2012-02-29 10:00 | 2, 28 | 8% | 2.75d? | 0d |  |  | 64h | 5.4h |  |
| 43 | 1.4.1 | 商户基本信息维护 | 1d? | 2012-02-24 10:00 | 2012-02-27 10:00 |  |  |  | 0.5d | 0d | 王宏毅 | 8h |  | No BL |
| 44 | 1.4.2 | 商户搭伙费维护 | 0.75d? | 2012-02-27 10:00 | 2012-02-27 17:00 | 43 |  |  | 0.5d | 0d | 王宏毅 | 6h |  | No BL |
| 45 | 1.4.3 | 浮动费率维护 | 0.75d? | 2012-02-28 08:00 | 2012-02-28 15:00 | 44 |  |  | 0.5d |  | 王宏毅 | 6h |  | No BL |
| 46 | 1.4.4 | 餐次信息维护 | 0.75d? | 2012-02-24 10:00 A | 2012-02-24 17:00 |  | 90% | 0.07d? | 1.5d | 0d | 陈波 | 6h | 5.4h | No BL |
| 47 | 1.4.5 | 商户餐次信息维护 | 0.75d? | 2012-02-27 08:00 | 2012-02-27 15:00 | 46 |  |  | 1.5d |  | 陈波 | 6h |  | No BL |
| 48 | 1.4.6 | 充值商户设备信息维护 | 1d? | 2012-02-24 10:00 | 2012-02-27 10:00 |  |  |  | 0d |  | 程新兴 | 8h |  | No BL |
| 49 | 1.4.7 | 充值操作员信息维护 | 1d? | 2012-02-27 10:00 | 2012-02-28 10:00 | 48 |  |  | 0d |  | 程新兴 | 8h |  | No BL |
| 50 | 1.4.8 | 充值操作员设备绑定 | 1d? | 2012-02-28 10:00 | 2012-02-29 10:00 | 49 |  |  | 0d |  | 程新兴 | 8h |  | No BL |
| 51 | 1.4.9 | 充值商户存款 | 1d? | 2012-02-24 10:00 | 2012-02-27 10:00 |  |  |  | 2d |  | 蒋根亮 | 8h |  | No BL |

Notes:
- 29: 设备信息的新增、修改、注销、查询
- 30: 导入设备、修改未审核设备、删除未审核设备、删除同一批次未审核设备、查询未审核设备、查询未审核设备、审核设备
- 32: 上传设备时钟、下传设备时钟、下传设备分组、强制前置机签退、下传搭伙费率、设置大额消费限额、采集历史消费流水、采集历史现金充值流水、设置消费累计限额、设置门禁开门模式
- 34: 客户类别信息的增、删、改、查
- 35: 客户基本信息的增、删、改、查
- 36: 客户信息导入、未审核客户信息修改、未审核客户信息删除、未审核客户信息查询、未审核客户信息批量删除、客户信息审核
- 39: 新生换卡名单导入、修改、删除、批量删除、查询
- 40: 银行卡绑定关系导入、增加、修改、删除、查询、批量删除
- 41: 联机模式下银行卡绑定客户绑定关系导入、增加、修改、删除、查询、批量查询
- 43: 商户基本信息增加、修改、注销、查询
- 44: 商户搭伙费的增、删、改、查
- 45: 浮动费率的增、删、改、查
- 46: 餐次信息的增、删、改、查
- 47: 商户餐次信息的增、删、改、查
- 48: 充值商户设备信息的增加、删除
- 49: 充值操作员基本信息的增、删、改、查
- 50: 充值操作员设备绑定关系的增加、删除

| ID | WBS | Task | Duration | Start | Finish | Predecessors | Total slack | Free slack | Resources | Work | 任务进度状态 |
| --- | --- | --- | --- | --- | --- | --- | --- | --- | --- | --- | --- |
| 52 | 1.5 | **卡务管理** | 5.5d? | 2012-02-29 10:00 | 2012-03-07 15:00 | 33, 42 | 0d |  |  | 228h |  |
| 53 | 1.5.1 | PSAM卡维护 | 1.25d? | 2012-02-29 10:00 | 2012-03-01 12:00 |  | 0.75d | 0d | 孟诗佳 | 10h | No BL |
| 54 | 1.5.2 | 未开户客户信息查询 | 0.5d? | 2012-03-01 13:00 | 2012-03-01 17:00 | 53 | 0.75d | 0d | 孟诗佳 | 4h | No BL |
| 55 | 1.5.3 | 用户卡发行 | 1d? | 2012-03-02 08:00 | 2012-03-02 17:00 | 54 | 0.75d | 0d | 孟诗佳 | 8h | No BL |
| 56 | 1.5.4 | 已开户客户信息查询 | 0.5d? | 2012-03-05 08:00 | 2012-03-05 12:00 | 55 | 0.75d | 0d | 孟诗佳 | 4h | No BL |
| 57 | 1.5.5 | 换卡维护 | 1d? | 2012-02-29 10:00 | 2012-03-01 10:00 |  | 0d |  | 王宏毅 | 8h | No BL |
| 58 | 1.5.6 | 挂失解挂卡 | 0.75d? | 2012-03-01 10:00 | 2012-03-01 17:00 | 57 | 0d |  | 王宏毅 | 6h | No BL |
| 59 | 1.5.7 | 冻结解冻卡 | 0.75d? | 2012-03-02 08:00 | 2012-03-02 15:00 | 58 | 0d |  | 王宏毅 | 6h | No BL |
| 60 | 1.5.8 | 补办卡 | 1d? | 2012-03-02 15:00 | 2012-03-05 15:00 | 59 | 0d |  | 王宏毅 | 8h | No BL |
| 61 | 1.5.9 | 卡销户 | 1.5d? | 2012-03-05 13:00 | 2012-03-06 17:00 | 56 | 0.75d |  | 孟诗佳 | 12h | No BL |
| 62 | 1.5.10 | 校园卡充值与支取 | 1d? | 2012-02-29 10:00 | 2012-03-01 10:00 |  | 2d | 0d | 陈波 | 8h | No BL |
| 63 | 1.5.11 | 卡余额调整 | 0.75d? | 2012-03-01 10:00 | 2012-03-01 17:00 | 62 | 2d | 0d | 陈波 | 6h | No BL |
| 64 | 1.5.12 | 后付费扣款 | 1d? | 2012-03-02 08:00 | 2012-03-02 17:00 | 63 | 2d | 0d | 陈波 | 8h | No BL |
| 65 | 1.5.13 | 卡信息更新 | 0.75d? | 2012-03-05 08:00 | 2012-03-05 15:00 | 64 | 2d |  | 陈波 | 6h | No BL |
| 66 | 1.5.14 | 卡密码重置 | 0.5d? | 2012-02-29 10:00 | 2012-02-29 15:00 |  | 1.75d | 0d | 隆楚雄 | 4h | No BL |
| 67 | 1.5.15 | 账务手工调整 | 1d? | 2012-03-06 10:00 | 2012-03-07 10:00 | 73 | 0.5d |  | 程新兴 | 8h | No BL |
| 68 | 1.5.16 | 卡交易流水查询 | 0.5d? | 2012-02-29 15:00 | 2012-03-01 10:00 | 66 | 1.75d | 0d | 隆楚雄 | 4h | No BL |
| 69 | 1.5.17 | 交易冲正 | 1d? | 2012-02-29 10:00 | 2012-03-01 10:00 |  | 0.5d | 0d | 程新兴 | 8h | No BL |
| 70 | 1.5.18 | 开户冲正 | 1.25d? | 2012-02-29 10:00 | 2012-03-01 12:00 |  | 4.25d |  | 游毅明 | 10h | No BL |
| 71 | 1.5.19 | 充值冲正 | 1d? | 2012-03-02 10:00 | 2012-03-05 10:00 | 72 | 0.5d | 0d | 程新兴 | 8h | No BL |
| 72 | 1.5.20 | 消费冲正 | 1d? | 2012-03-01 10:00 | 2012-03-02 10:00 | 69 | 0.5d | 0d | 程新兴 | 8h | No BL |
| 73 | 1.5.21 | 补帐交易 | 1d? | 2012-03-05 10:00 | 2012-03-06 10:00 | 71 | 0.5d | 0d | 程新兴 | 8h | No BL |
| 74 | 1.5.22 | 坏卡维护 | 0.75d? | 2012-03-01 10:00 | 2012-03-01 17:00 | 68 | 1.75d | 0d | 隆楚雄 | 6h | No BL |
| 75 | 1.5.23 | 持卡人帐户信息查询 | 0.5d? | 2012-03-02 08:00 | 2012-03-02 12:00 | 74 | 1.75d | 0d | 隆楚雄 | 4h | No BL |
| 76 | 1.5.24 | 帐户交易明细查询 | 0.5d? | 2012-03-02 13:00 | 2012-03-02 17:00 | 75 | 1.75d | 0d | 隆楚雄 | 4h | No BL |
| 77 | 1.5.25 | 卡流水上传 | 1d? | 2012-03-05 08:00 | 2012-03-05 17:00 | 76 | 1.75d |  | 隆楚雄 | 8h | No BL |
| 78 | 1.5.26 | 卡库不平处理 | 2d? | 2012-02-29 10:00 | 2012-03-02 10:00 |  | 3.5d |  | 游毅明 | 16h | No BL |
| 79 | 1.5.27 | POS流水导入管理 | 1.5d? | 2012-02-29 10:00 | 2012-03-01 15:00 |  | 2.75d | 0d | 蒋根亮 | 12h | No BL |
| 80 | 1.5.28 | POS异常流水管理 | 1.25d? | 2012-03-01 15:00 | 2012-03-02 17:00 | 79 | 2.75d |  | 蒋根亮 | 10h | No BL |
| 81 | 1.5.29 | 处理写卡异常流水 | 0.75d? | 2012-03-05 15:00 | 2012-03-06 12:00 | 60 | 0d |  | 王宏毅 | 6h | No BL |
| 82 | 1.5.30 | 第三方支付 | 1.25d? | 2012-03-06 13:00 | 2012-03-07 15:00 | 81 | 0d |  | 王宏毅 | 10h | No BL |

Notes:
- 53: PSAM卡发行，回收，查询
- 55: 用户卡发行、匿名卡发行
- 57: 换卡，撤销换卡
- 58: 挂失卡，解挂卡
- 59: 冻结卡，解冻卡
- 61: 退小钱包，卡销户
- 62: 校园卡充值，校园卡支取
- 74: 坏卡登记、取消坏卡登记、坏卡登记修改
- 78: 卡库不平记录查询，卡库不平记录处理
- 79: POS流水导入、POS流水增加、POS流水修改、POS流水删除、POS流水查询、POS流水批量删除、POS流水审核
- 80: POS异常流水查询、修改、删除

| ID | WBS | Task | Duration | Start | Finish | Predecessors | Total slack | Free slack | Resources | Work | 任务进度状态 |
| --- | --- | --- | --- | --- | --- | --- | --- | --- | --- | --- | --- |
| 83 | 1.6 | **圈存对账管理** | 4d? | 2012-03-07 15:00 | 2012-03-13 15:00 | 52 | 0d |  |  | 32h |  |
| 84 | 1.6.1 | 对账单处理 | 1d? | 2012-03-07 15:00 | 2012-03-08 15:00 |  | 0d |  | 孟诗佳 | 8h | No BL |
| 85 | 1.6.2 | 对账明细处理 | 1d? | 2012-03-08 15:00 | 2012-03-09 15:00 | 84 | 0d |  | 孟诗佳 | 8h | No BL |
| 86 | 1.6.3 | 银行卡余额查询 | 0.75d? | 2012-03-09 15:00 | 2012-03-12 12:00 | 85 | 0d |  | 孟诗佳 | 6h | No BL |
| 87 | 1.6.4 | 圈存转账 | 1.25d? | 2012-03-12 13:00 | 2012-03-13 15:00 | 86 | 0d |  | 孟诗佳 | 10h | No BL |
| 88 | 1.7 | **结算管理** | 6.75d? | 2012-03-13 15:00 | 2012-03-22 12:00 | 83, 117 | 0d |  |  | 150h |  |
| 89 | 1.7.1 | 日终结算 | 3d? | 2012-03-13 15:00 | 2012-03-16 15:00 |  | 0d |  | 程新兴 | 24h | No BL |
| 90 | 1.7.2 | 商户解款维护 | 1.5d? | 2012-03-16 15:00 | 2012-03-20 10:00 | 89 | 0d |  | 程新兴 | 12h | No BL |
| 91 | 1.7.3 | 商户当日报表查询 | 0.75d? | 2012-03-13 15:00 | 2012-03-14 12:00 |  | 3d | 0d | 陈波 | 6h | No BL |
| 92 | 1.7.4 | 操作员票据现金报表查询 | 0.75d? | 2012-03-14 13:00 | 2012-03-15 10:00 | 91 | 3d | 0d | 陈波 | 6h | No BL |
| 93 | 1.7.5 | 操作员卡片使用情况汇总查询 | 0.75d? | 2012-03-15 10:00 | 2012-03-15 17:00 | 92 | 3d | 0d | 陈波 | 6h | No BL |
| 94 | 1.7.6 | 科目余额报表查询 | 0.75d? | 2012-03-13 15:00 | 2012-03-14 12:00 |  | 3.75d | 0d | 王宏毅 | 6h | No BL |
| 95 | 1.7.7 | 科目总账报表查询 | 0.75d? | 2012-03-14 13:00 | 2012-03-15 10:00 | 94 | 3.75d | 0d | 王宏毅 | 6h | No BL |
| 96 | 1.7.8 | 收支平衡报表查询 | 0.75d? | 2012-03-15 10:00 | 2012-03-15 17:00 | 95 | 3.75d | 0d | 王宏毅 | 6h | No BL |
| 97 | 1.7.9 | 系统运行情况报表查询 | 0.75d? | 2012-03-16 08:00 | 2012-03-16 15:00 | 96 | 3.75d |  | 王宏毅 | 6h | No BL |
| 98 | 1.7.10 | 商户营业情况报表查询 | 0.75d? | 2012-03-16 08:00 | 2012-03-16 15:00 | 93 | 3d | 0d | 陈波 | 6h | No BL |
| 99 | 1.7.11 | 商户汇总结算报表查询 | 0.75d? | 2012-03-16 15:00 | 2012-03-19 12:00 | 98 | 3d |  | 陈波 | 6h | No BL |
| 100 | 1.7.12 | 商户分餐汇总结算报表查询 | 0.75d? | 2012-03-14 13:00 | 2012-03-15 10:00 | 104 | 5.25d |  | 蒋根亮 | 6h | No BL |
| 101 | 1.7.13 | 商户搭伙费报表查询 | 0.75d? | 2012-03-20 10:00 | 2012-03-20 17:00 | 90 | 0d |  | 程新兴 | 6h | No BL |
| 102 | 1.7.14 | 商户分类结算报表查询 | 0.75d? | 2012-03-21 08:00 | 2012-03-21 15:00 | 101 | 0d |  | 程新兴 | 6h | No BL |
| 103 | 1.7.15 | 商户POS分类结算报表查询 | 0.75d? | 2012-03-21 15:00 | 2012-03-22 12:00 | 102 | 0d |  | 程新兴 | 6h | No BL |
| 104 | 1.7.16 | 商户分餐分类结算报表查询 | 0.75d? | 2012-03-13 15:00 | 2012-03-14 12:00 |  | 5.25d | 0d | 蒋根亮 | 6h | No BL |
| 105 | 1.7.17 | 销户现金报表查询 | 0.75d? | 2012-03-13 15:00 | 2012-03-14 12:00 |  | 3d | 0d | 隆楚雄 | 6h | No BL |
| 106 | 1.7.18 | 操作员票据现金报表查询 | 0.75d? | 2012-03-14 13:00 | 2012-03-15 10:00 | 105 | 3d | 0d | 隆楚雄 | 6h | No BL |
| 107 | 1.7.19 | 操作员卡片使用情况汇总报表查询 | 0.75d? | 2012-03-15 10:00 | 2012-03-15 17:00 | 106 | 3d | 0d | 隆楚雄 | 6h | No BL |
| 108 | 1.7.20 | 操作员业务报表查询 | 0.75d? | 2012-03-16 08:00 | 2012-03-16 15:00 | 107 | 3d | 0d | 隆楚雄 | 6h | No BL |
| 109 | 1.7.21 | 操作员票据现金汇总报表 | 0.75d? | 2012-03-16 15:00 | 2012-03-19 12:00 | 108 | 3d |  | 隆楚雄 | 6h | No BL |

Notes:
- 84: 圈存对账单查询与处理
- 85: 圈存对账明细查询与处理
- 90: 商户可解款金额查询、商户解款、商户解款记录查询

| ID | WBS | Task | Duration | Start | Finish | Predecessors | Total slack | Free slack | Resources | Work | 任务进度状态 |
| --- | --- | --- | --- | --- | --- | --- | --- | --- | --- | --- | --- |
| 110 | 1.8 | **守护任务** | 2d? | 2012-04-01 14:30 | 2012-04-06 14:00 | 142, 146 | 0d |  |  | 96h |  |
| 111 | 1.8.1 | 消费流水入账 | 2d? | 2012-04-01 14:30 | 2012-04-06 14:00 |  | 0d |  | 程新兴 | 16h | No BL |
| 112 | 1.8.2 | 采集丢失流水 | 2d? | 2012-04-01 14:30 | 2012-04-06 14:00 |  | 0d |  | 王宏毅 | 16h | No BL |
| 113 | 1.8.3 | 卡库不平统计 | 2d? | 2012-04-01 14:30 | 2012-04-06 14:00 |  | 0d |  | 游毅明 | 16h | No BL |
| 114 | 1.8.4 | 氺控流水入账 | 2d? | 2012-04-01 14:30 | 2012-04-06 14:00 |  | 0d |  | 孟诗佳 | 16h | No BL |
| 115 | 1.8.5 | 圈存对账 | 2d? | 2012-04-01 14:30 | 2012-04-06 14:00 |  | 0d |  | 蒋根亮 | 16h | No BL |
| 116 | 1.8.6 | 门禁服务 | 2d? | 2012-04-01 14:30 | 2012-04-06 14:00 |  | 0d |  | 陈波 | 16h | No BL |
| 117 | 1.9 | **补助管理** | 3.25d? | 2012-03-07 15:00 | 2012-03-12 17:00 | 52 | 0.75d |  |  | 26h |  |
| 118 | 1.9.1 | 补助信息导入管理 | 1.25d | 2012-03-07 15:00 | 2012-03-08 17:00 |  | 0.75d | 0d | 陈波 | 10h | No BL |
| 119 | 1.9.2 | 补助信息下发 | 0.75d? | 2012-03-09 08:00 | 2012-03-09 15:00 | 118 | 0.75d | 0d | 陈波 | 6h | No BL |
| 120 | 1.9.3 | 领取补助 | 1.25d? | 2012-03-09 15:00 | 2012-03-12 17:00 | 119 | 0.75d |  | 陈波 | 10h | No BL |
| 121 | 1.10 | **门禁管理** | 4.5d? | 2012-03-22 13:00 | 2012-03-28 17:00 | 88 | 0d |  |  | 96h |  |
| 122 | 1.10.1 | 门禁组维护 | 0.75d? | 2012-03-22 13:00 | 2012-03-23 10:00 |  | 0d |  | 隆楚雄 | 6h | No BL |
| 123 | 1.10.2 | 时间段维护 | 0.75d? | 2012-03-23 10:00 | 2012-03-23 17:00 | 122 | 0d |  | 隆楚雄 | 6h | No BL |
| 124 | 1.10.3 | 时间段组维护 | 0.75d? | 2012-03-26 08:00 | 2012-03-26 15:00 | 123 | 0d |  | 隆楚雄 | 6h | No BL |
| 125 | 1.10.4 | 周时间段维护 | 0.75d? | 2012-03-26 15:00 | 2012-03-27 12:00 | 124 | 0d |  | 隆楚雄 | 6h | No BL |
| 126 | 1.10.5 | 常开时间段维护 | 1d? | 2012-03-27 13:00 | 2012-03-28 12:00 | 125 | 0d |  | 隆楚雄 | 8h | No BL |
| 127 | 1.10.6 | 节假日维护 | 0.5d? | 2012-03-28 13:00 | 2012-03-28 17:00 | 126 | 0d |  | 隆楚雄 | 4h | No BL |
| 128 | 1.10.7 | 门禁对接参数维护 | 0.75d? | 2012-03-22 13:00 | 2012-03-23 10:00 |  | 0.25d | 0d | 游毅明 | 6h | No BL |
| 129 | 1.10.8 | 门禁时间周设置 | 0.75d? | 2012-03-23 10:00 | 2012-03-23 17:00 | 128 | 0.25d | 0d | 游毅明 | 6h | No BL |
| 130 | 1.10.9 | 管理卡常开卡设置 | 1d? | 2012-03-26 08:00 | 2012-03-26 17:00 | 129 | 0.25d | 0d | 游毅明 | 8h | No BL |
| 131 | 1.10.10 | 门禁常开常闭设置 | 1d? | 2012-03-27 08:00 | 2012-03-27 17:00 | 130 | 0.25d | 0d | 游毅明 | 8h | No BL |
| 132 | 1.10.11 | 门禁机分组设置 | 0.75d? | 2012-03-28 08:00 | 2012-03-28 15:00 | 131 | 0.25d |  | 游毅明 | 6h | No BL |
| 133 | 1.10.12 | 门禁机操作员设置 | 0.75d? | 2012-03-22 13:00 | 2012-03-23 10:00 |  | 1.25d | 0d | 陈波 | 6h | No BL |
| 134 | 1.10.13 | 门禁组操作员设置 | 0.75d? | 2012-03-23 10:00 | 2012-03-23 17:00 | 133 | 1.25d | 0d | 陈波 | 6h | No BL |
| 135 | 1.10.14 | 门禁人员名单维护 | 1d? | 2012-03-26 08:00 | 2012-03-26 17:00 | 134 | 1.25d | 0d | 陈波 | 8h | No BL |
| 136 | 1.10.15 | 门禁流水查询 | 0.75d? | 2012-03-27 08:00 | 2012-03-27 15:00 | 135 | 1.25d |  | 陈波 | 6h | No BL |

Notes:
- 118: 补助信息导入、未审核补助查询、未审核补助修改、未审核补助删除、未审核补助批量删除、补助信息审核
- 122: 门禁组信息的增、删、改、查
- 123: 门禁时间段的增、删、改、查
- 124: 门禁时间段组的增、删、改、查
- 125: 门禁周时间段的增、删、改、查
- 126: 门禁常开时间段的增加、删除、查询
- 127: 节假日信息的增、删、改、查
- 128: 门禁对接参数的增、删、改、查
- 129: 门禁时间周的设置、删除、查询
- 130: 管理卡常开卡设置与查询
- 132: 门禁机分组信息的增加、删除、查询
- 133: 门禁机操作员对应关系的增加、删除、查询
- 134: 门禁组操作员对应关系的增加、删除、查询
- 135: 门禁人员名单的分配、查询、删除

| ID | WBS | Task | Duration | Start | Finish | Predecessors | Total slack | Free slack | Resources | Work | 任务进度状态 |
| --- | --- | --- | --- | --- | --- | --- | --- | --- | --- | --- | --- |
| 137 | 1.11 | **氺控管理** | 4d? | 2012-03-22 13:00 | 2012-03-28 12:00 | 88 | 0.5d |  |  | 32h |  |
| 138 | 1.11.1 | 氺控设置维护 | 1.75d? | 2012-03-22 13:00 | 2012-03-26 10:00 |  | 0.5d | 0d | 孟诗佳 | 14h | No BL |
| 139 | 1.11.2 | 氺控流水上传 | 0.75d? | 2012-03-26 10:00 | 2012-03-26 17:00 | 138 | 0.5d | 0d | 孟诗佳 | 6h | No BL |
| 140 | 1.11.3 | 氺控钱包转账 | 0.75d? | 2012-03-27 08:00 | 2012-03-27 15:00 | 139 | 0.5d | 0d | 孟诗佳 | 6h | No BL |
| 141 | 1.11.4 | 氺控钱包流水查询 | 0.75d? | 2012-03-27 15:00 | 2012-03-28 12:00 | 140 | 0.5d |  | 孟诗佳 | 6h | No BL |
| 142 | 1.12 | **手持机管理** | 3.5d? | 2012-03-29 08:00 | 2012-04-01 12:30 | 121, 137 | 0.25d |  |  | 28h |  |
| 143 | 1.12.1 | 采集消费流水 | 1.25d? | 2012-03-29 08:00 | 2012-03-30 10:00 |  | 0.25d | 0d | 程新兴 | 10h | No BL |
| 144 | 1.12.2 | 查询黑白名单 | 1d? | 2012-03-30 10:00 | 2012-03-31 11:00 | 143 | 0.25d | 0d | 程新兴 | 8h | No BL |
| 145 | 1.12.3 | 更新设备黑名单版本 | 1.25d? | 2012-03-31 11:00 | 2012-04-01 12:30 | 144 | 0.25d |  | 程新兴 | 10h | No BL |
| 146 | 1.13 | **车载机管理** | 3.75d? | 2012-03-29 08:00 | 2012-04-01 14:30 | 121, 137 | 0d |  |  | 30h |  |
| 147 | 1.13.1 | 生成黑名单文件 | 1.25d? | 2012-03-29 08:00 | 2012-03-30 10:00 |  | 0d |  | 蒋根亮 | 10h | No BL |
| 148 | 1.13.2 | 车载机流水上传 | 1.25d? | 2012-03-30 10:00 | 2012-03-31 13:00 | 147 | 0d |  | 蒋根亮 | 10h | No BL |
| 149 | 1.13.3 | 车载POS机流水查询与统计 | 1.25d? | 2012-03-31 13:00 | 2012-04-01 14:30 | 148 | 0d |  | 蒋根亮 | 10h | No BL |

Notes:
- 138: 氺控设置卡增加、修改、删除、查询
- 149: 车载POS机刷卡流水查询，车载POS机刷卡流水统计
