Schedule from MS Project, 2010-11-09 to 2010-12-30, A marks actual dates.

## Calendars

- 标准: Mon-Fri 08:00-12:00, 13:00-17:00; Sat-Sun off. Exceptions (off unless hours are given): 2010-12-25 08:00-12:00, 13:00-17:00.

## Resources

| Resource |
| --- |
| 金仕达 |
| 金仕达 东莞移动 |
| 东莞移动 |
| 金仕达 东莞移动 接入方 |
| 金仕达 东莞移动 大明 |
| 金仕达 东莞移动 建邦 |
| 金仕达 东莞移动 省密钥 |
| 金士达 |
| 金 |

## Schedule

| ID | WBS | Task | Duration | Start | Finish | Predecessors | Complete | Remaining | Total slack | Constraint | Resources | Work | Actual work |
| --- | --- | --- | --- | --- | --- | --- | --- | --- | --- | --- | --- | --- | --- |
| 1 | 1 | **东莞移动城市e卡通平台建设项目实施计划** | 39d? | 2010-11-09 A | 2010-12-30 |  | 87% | 4.93d? | 0d |  |  | 1880h | 1744h |
| 2 | 1.1 | **实施过程** | 32d? | 2010-11-09 A | 2010-12-22 |  | 93% | 2.22d? | 7d |  |  | 1880h | 1744h |
| 3 | 1.1.1 | **第一阶段（需求确认）** | 27d? | 2010-11-09 A | 2010-12-15 |  | 95% | 1.35d? | 12d |  |  | 1232h | 1168h |
| 4 | 1.1.1.1 | **需求部分** | 27d? | 2010-11-09 A | 2010-12-15 A |  | 100% |  |  |  |  | 408h | 408h |
| 5 | 1.1.1.1.1 | **需求沟通** | 24d? | 2010-11-09 A | 2010-12-10 A |  | 100% |  |  |  |  | 384h | 384h |
| 6 | 1.1.1.1.1.1 | 业务过程沟通 | 24d? | 2010-11-09 A | 2010-12-10 A |  | 100% |  |  | finish no earlier than 2010-12-10 | 金仕达 东莞移动 | 192h | 192h |
| 7 | 1.1.1.1.1.2 | 流程梳理 | 24d? | 2010-11-09 A | 2010-12-10 A |  | 100% |  |  | finish no earlier than 2010-12-10 | 金仕达 东莞移动 | 192h | 192h |
| 8 | 1.1.1.1.2 | 编写《项目需求规格说明书》 | 2d? | 2010-12-13 A | 2010-12-14 A | 7 | 100% |  |  |  | 金仕达 | 16h | 16h |
| 9 | 1.1.1.1.3 | 《项目需求规格说明书》确认 | 1d? | 2010-12-15 A | 2010-12-15 A | 8 | 100% |  |  |  | 金仕达 东莞移动 | 8h | 8h |
| 10 | 1.1.1.2 | **技术方案** | 9d? | 2010-11-23 A | 2010-12-03 |  | 93% | 0.66d? | 20d |  |  | 824h | 760h |
| 11 | 1.1.1.2.1 | **技术沟通** | 9d? | 2010-11-23 A | 2010-12-03 |  | 94% | 0.54d? | 20d |  |  | 752h | 704h |
| 12 | 1.1.1.2.1.1 | **大明设备** | 6d? | 2010-11-23 A | 2010-11-30 |  | 50% | 3d? | 23d |  |  | 96h | 48h |
| 13 | 1.1.1.2.1.1.1 | 公交POS | 6d? | 2010-11-23 A | 2010-11-30 A |  | 100% |  |  | start no earlier than 2010-11-23 | 金仕达 东莞移动 大明 | 48h | 48h |
| 14 | 1.1.1.2.1.1.2 | 读卡器充值 | 6d? | 2010-11-23 | 2010-11-30 |  |  |  | 23d | start no earlier than 2010-11-23 | 金仕达 东莞移动 大明 | 48h |  |
| 15 | 1.1.1.2.1.2 | **建邦公司** | 7d? | 2010-11-23 A | 2010-12-01 A |  | 100% |  |  |  |  | 96h | 96h |
| 16 | 1.1.1.2.1.2.1 | 多媒体机圈存 | 6d? | 2010-11-24 A | 2010-12-01 A |  | 100% |  |  | finish no earlier than 2010-12-01 | 金仕达 东莞移动 建邦 | 48h | 48h |
| 17 | 1.1.1.2.1.2.2 | 读卡器消费（有收银） | 6d? | 2010-11-24 A | 2010-12-01 A |  | 100% |  |  | start no earlier than 2010-11-24 | 金仕达 东莞移动 建邦 | 48h | 48h |
| 18 | 1.1.1.2.1.2.3 | 读卡器充值 | 6d? | 2010-11-23 A | 2010-11-30 A |  | 100% |  |  | finish no earlier than 2010-11-30 |  |  |  |
| 19 | 1.1.1.2.1.3 | **非实名卡** | 4d? | 2010-11-23 A | 2010-11-26 A |  | 100% |  |  |  |  | 64h | 64h |
| 20 | 1.1.1.2.1.3.1 | 发卡 | 4d? | 2010-11-23 A | 2010-11-26 A |  | 100% |  |  | finish no earlier than 2010-11-26 | 金仕达 东莞移动 | 32h | 32h |
| 21 | 1.1.1.2.1.3.2 | 充值 | 4d? | 2010-11-23 A | 2010-11-26 A |  | 100% |  |  | start no earlier than 2010-11-23 | 金仕达 东莞移动 省密钥 | 32h | 32h |
| 22 | 1.1.1.2.1.4 | 省密钥 | 7d? | 2010-11-23 A | 2010-12-01 A |  | 100% |  |  | finish no earlier than 2010-12-01 | 金仕达 东莞移动 省密钥 | 56h | 56h |
| 23 | 1.1.1.2.1.5 | **用户管理** | 5d? | 2010-11-29 A | 2010-12-03 A |  | 100% |  |  |  |  | 80h | 80h |
| 24 | 1.1.1.2.1.5.1 | 用户手工数据录入 | 5d? | 2010-11-29 A | 2010-12-03 A |  | 100% |  |  | finish no earlier than 2010-12-03 | 金仕达 | 40h | 40h |
| 25 | 1.1.1.2.1.5.2 | 用户批量导入 | 5d? | 2010-11-29 A | 2010-12-03 A |  | 100% |  |  | start no earlier than 2010-11-29 | 金仕达 | 40h | 40h |

| ID | WBS | Task | Duration | Start | Finish | Predecessors | Complete | Remaining | Total slack | Constraint | Resources | Work | Actual work |
| --- | --- | --- | --- | --- | --- | --- | --- | --- | --- | --- | --- | --- | --- |
| 26 | 1.1.1.2.1.6 | **商家** | 5d? | 2010-11-29 A | 2010-12-03 A |  | 100% |  |  |  |  | 80h | 80h |
| 27 | 1.1.1.2.1.6.1 | 商家开户 | 5d? | 2010-11-29 A | 2010-12-03 A |  | 100% |  |  | start no earlier than 2010-11-29 | 金仕达 | 40h | 40h |
| 28 | 1.1.1.2.1.6.2 | 商户营业查询 | 5d? | 2010-11-29 A | 2010-12-03 A |  | 100% |  |  | start no earlier than 2010-11-29 | 金仕达 | 40h | 40h |
| 29 | 1.1.1.2.1.7 | 设备维护 | 5d? | 2010-11-29 A | 2010-12-03 A |  | 100% |  |  | start no earlier than 2010-11-29 | 金仕达 | 40h | 40h |
| 30 | 1.1.1.2.1.8 | **清算** | 5d? | 2010-11-29 A | 2010-12-03 A |  | 100% |  |  |  |  | 120h | 120h |
| 31 | 1.1.1.2.1.8.1 | 圈存 | 5d? | 2010-11-29 A | 2010-12-03 A |  | 100% |  |  | start no earlier than 2010-11-29 | 金仕达 东莞移动 | 40h | 40h |
| 32 | 1.1.1.2.1.8.2 | 现金充值 | 5d? | 2010-11-29 A | 2010-12-03 A |  | 100% |  |  | start no earlier than 2010-11-29 | 金仕达 东莞移动 | 40h | 40h |
| 33 | 1.1.1.2.1.8.3 | 消费 | 5d? | 2010-11-29 A | 2010-12-03 A |  | 100% |  |  | start no earlier than 2010-11-29 | 金仕达 东莞移动 | 40h | 40h |
| 34 | 1.1.1.2.1.9 | **操作员管理** | 5d? | 2010-11-29 A | 2010-12-03 A |  | 100% |  |  |  |  | 120h | 120h |
| 35 | 1.1.1.2.1.9.1 | 营业网点 | 5d? | 2010-11-29 A | 2010-12-03 A |  | 100% |  |  | start no earlier than 2010-11-29 | 金仕达 | 40h | 40h |
| 36 | 1.1.1.2.1.9.2 | 操作员角色 | 5d? | 2010-11-29 A | 2010-12-03 A |  | 100% |  |  | start no earlier than 2010-11-29 | 金仕达 | 40h | 40h |
| 37 | 1.1.1.2.1.9.3 | 操作员报表 | 5d? | 2010-11-29 A | 2010-12-03 A |  | 100% |  |  | start no earlier than 2010-11-29 | 金仕达 | 40h | 40h |
| 38 | 1.1.1.2.2 | 根据实现内容编写《技术方案》 | 7d? | 2010-11-23 A | 2010-12-01 A |  | 100% |  |  | finish no earlier than 2010-12-01 | 金仕达 | 56h | 56h |
| 39 | 1.1.1.2.3 | 《技术方案》确认 | 2d? | 2010-11-30 | 2010-12-01 |  |  |  | 22d | start no earlier than 2010-11-30 | 金仕达 东莞移动 接入方 | 16h |  |
| 40 | 1.1.2 | **第二阶段(定制：设计、开发、第三方对接、测试)** | 12d? | 2010-11-29 A | 2010-12-14 A |  | 100% |  |  |  |  | 384h | 384h |
| 41 | 1.1.2.1 | 设备接入开发 | 12d? | 2010-11-29 A | 2010-12-14 A |  | 100% |  |  | start no earlier than 2010-11-29 | 金仕达 | 96h | 96h |
| 42 | 1.1.2.2 | 卡片密钥认证 | 12d? | 2010-11-29 A | 2010-12-14 A |  | 100% |  |  | start no earlier than 2010-11-29 | 金仕达 | 96h | 96h |
| 43 | 1.1.2.3 | 平台调整 | 12d? | 2010-11-29 A | 2010-12-14 A |  | 100% |  |  | start no earlier than 2010-11-29 | 金仕达 | 96h | 96h |
| 44 | 1.1.2.4 | 测试 | 12d? | 2010-11-29 A | 2010-12-14 A |  | 100% |  |  | start no earlier than 2010-11-29 | 金仕达 | 96h | 96h |
| 45 | 1.1.3 | **第三阶段（系统部署、联调）** | 12d? | 2010-12-06 A | 2010-12-21 |  | 75% | 3d? | 8d |  |  | 224h | 160h |
| 46 | 1.1.3.1 | **环境准备** | 7d? | 2010-12-06 A | 2010-12-14 A |  | 100% |  |  |  |  | 56h | 56h |
| 47 | 1.1.3.1.1 | 客户硬件设备准备 | 7d? | 2010-12-06 A | 2010-12-14 A |  | 100% |  |  | start no earlier than 2010-12-06 | 东莞移动 | 56h | 56h |
| 48 | 1.1.3.2 | **系统安装** | 3d? | 2010-12-15 A | 2010-12-17 A |  | 100% |  |  |  |  | 8h | 8h |
| 49 | 1.1.3.2.1 | 操作系统、数据库安装 | 1d? | 2010-12-15 A | 2010-12-15 A |  | 100% |  |  | finish no earlier than 2010-12-15 | 金仕达 | 8h | 8h |
| 50 | 1.1.3.2.2 | e卡通平台安装 | 1d? | 2010-12-16 A | 2010-12-16 A | 49 | 100% |  |  | start no earlier than 2010-12-15 |  |  |  |
| 51 | 1.1.3.2.3 | 前置安装 | 1d? | 2010-12-16 A | 2010-12-16 A | 49 | 100% |  |  | start no earlier than 2010-12-15 |  |  |  |
| 52 | 1.1.3.2.4 | 系统安装、调试 | 2d | 2010-12-16 A | 2010-12-17 A | 49 | 100% |  |  | start no earlier than 2010-12-15 |  |  |  |

Notes:
- 49: 数据库服务器、应用服务器、通讯平台、web服务器、前置机
- 52: 数据库服务器、应用服务器、通讯平台、web服务器、前置机

| ID | WBS | Task | Duration | Start | Finish | Complete | Remaining | Total slack | Constraint | Resources | Work | Actual work |
| --- | --- | --- | --- | --- | --- | --- | --- | --- | --- | --- | --- | --- |
| 53 | 1.1.3.3 | **集成测试** | 4d? | 2010-12-16 A | 2010-12-21 | 60% | 1.6d? | 8d |  |  | 160h | 96h |
| 54 | 1.1.3.3.1 | 基础数据收集 | 2d? | 2010-12-16 A | 2010-12-17 A | 100% |  |  | start no earlier than 2010-12-16 | 金仕达 东莞移动 | 16h | 16h |
| 55 | 1.1.3.3.2 | 导入基础信息 | 2d | 2010-12-20 A | 2010-12-21 A | 100% |  |  | start no earlier than 2010-12-18 | 金仕达 东莞移动 | 16h | 16h |
| 56 | 1.1.3.3.3 | 设置基础信息 | 2d | 2010-12-20 A | 2010-12-21 A | 100% |  |  | start no earlier than 2010-12-20 | 金仕达 东莞移动 | 16h | 16h |
| 57 | 1.1.3.3.4 | **设备联网调试** | 2d | 2010-12-20 A | 2010-12-21 | 33% | 1.33d | 8d |  |  | 48h | 16h |
| 58 | 1.1.3.3.4.1 | 公交POS | 2d | 2010-12-20 | 2010-12-21 |  |  | 8d | start no earlier than 2010-12-20 | 金仕达 东莞移动 | 16h |  |
| 59 | 1.1.3.3.4.2 | 多媒体机 | 2d | 2010-12-20 | 2010-12-21 |  |  | 8d | start no earlier than 2010-12-20 | 金仕达 东莞移动 | 16h |  |
| 60 | 1.1.3.3.4.3 | 充值 | 2d | 2010-12-20 A | 2010-12-21 A | 100% |  |  | start no earlier than 2010-12-20 | 金仕达 东莞移动 | 16h | 16h |
| 61 | 1.1.3.3.5 | 设备刷卡测试 | 2d | 2010-12-20 A | 2010-12-21 A | 100% |  |  | start no earlier than 2010-12-20 | 金仕达 东莞移动 | 16h | 16h |
| 62 | 1.1.3.3.6 | 设备采集流水 | 2d | 2010-12-20 | 2010-12-21 |  |  | 8d | start no earlier than 2010-12-20 | 金仕达 东莞移动 | 16h |  |
| 63 | 1.1.3.3.7 | 系统清算测试 | 2d | 2010-12-20 | 2010-12-21 |  |  | 8d | start no earlier than 2010-12-20 | 金仕达 东莞移动 | 16h |  |
| 64 | 1.1.3.3.8 | 系统报表测试 | 2d | 2010-12-20 A | 2010-12-21 A | 100% |  |  | start no earlier than 2010-12-20 | 金仕达 东莞移动 | 16h | 16h |
| 65 | 1.1.4 | **第四阶段 （系统初验）** | 6d? | 2010-12-15 A | 2010-12-22 | 80% | 1.2d? | 7d |  |  | 40h | 32h |
| 66 | 1.1.4.1 | 初验计划 | 3d? | 2010-12-15 A | 2010-12-17 A | 100% |  |  | start no earlier than 2010-12-15 | 金仕达 东莞移动 | 24h | 24h |
| 67 | 1.1.4.2 | 初验 | 1d? | 2010-12-22 A | 2010-12-22 A | 100% |  |  | start no earlier than 2010-12-22 | 金仕达 东莞移动 | 8h | 8h |
| 68 | 1.1.4.3 | 初验报告签字 | 1d? | 2010-12-22 | 2010-12-22 |  |  | 7d | start no earlier than 2010-12-22 | 东莞移动 | 8h |  |
| 69 | 1.2 | **项目日常管理** | 38d | 2010-11-10 | 2010-12-30 |  |  | 0d |  |  |  |  |
| 70 | 1.2.1 | **项目周报（每周三）** | 37d | 2010-11-10 | 2010-12-29 |  |  | 1d |  |  |  |  |
| 71 | 1.2.1.1 | 项目周报（每周三） 1 | 1d | 2010-11-10 | 2010-11-10 |  |  | 37d | start no earlier than 2010-11-10 |  |  |  |
| 72 | 1.2.1.2 | 项目周报（每周三） 2 | 1d | 2010-11-17 | 2010-11-17 |  |  | 32d | start no earlier than 2010-11-17 |  |  |  |
| 73 | 1.2.1.3 | 项目周报（每周三） 3 | 1d | 2010-11-24 | 2010-11-24 |  |  | 27d | start no earlier than 2010-11-24 |  |  |  |
| 74 | 1.2.1.4 | 项目周报（每周三） 4 | 1d | 2010-12-01 | 2010-12-01 |  |  | 22d | start no earlier than 2010-12-01 |  |  |  |
| 75 | 1.2.1.5 | 项目周报（每周三） 5 | 1d | 2010-12-08 | 2010-12-08 |  |  | 17d | start no earlier than 2010-12-08 |  |  |  |
| 76 | 1.2.1.6 | 项目周报（每周三） 6 | 1d | 2010-12-15 | 2010-12-15 |  |  | 12d | start no earlier than 2010-12-15 |  |  |  |
| 77 | 1.2.1.7 | 项目周报（每周三） 7 | 1d | 2010-12-22 | 2010-12-22 |  |  | 7d | start no earlier than 2010-12-22 |  |  |  |
| 78 | 1.2.1.8 | 项目周报（每周三） 8 | 1d | 2010-12-29 | 2010-12-29 |  |  | 1d | start no earlier than 2010-12-29 |  |  |  |

| ID | WBS | Task | Duration | Start | Finish | Total slack | Constraint |
| --- | --- | --- | --- | --- | --- | --- | --- |
| 79 | 1.2.2 | **项目例会(每周四上午)** | 37d | 2010-11-11 | 2010-12-30 | 0d |  |
| 80 | 1.2.2.1 | 项目例会(每周四上午) 1 | 1d | 2010-11-11 | 2010-11-11 | 36d | start no earlier than 2010-11-11 |
| 81 | 1.2.2.2 | 项目例会(每周四上午) 2 | 1d | 2010-11-18 | 2010-11-18 | 31d | start no earlier than 2010-11-18 |
| 82 | 1.2.2.3 | 项目例会(每周四上午) 3 | 1d | 2010-11-25 | 2010-11-25 | 26d | start no earlier than 2010-11-25 |
| 83 | 1.2.2.4 | 项目例会(每周四上午) 4 | 1d | 2010-12-02 | 2010-12-02 | 21d | start no earlier than 2010-12-02 |
| 84 | 1.2.2.5 | 项目例会(每周四上午) 5 | 1d | 2010-12-09 | 2010-12-09 | 16d | start no earlier than 2010-12-09 |
| 85 | 1.2.2.6 | 项目例会(每周四上午) 6 | 1d | 2010-12-16 | 2010-12-16 | 11d | start no earlier than 2010-12-16 |
| 86 | 1.2.2.7 | 项目例会(每周四上午) 7 | 1d | 2010-12-23 | 2010-12-23 | 6d | start no earlier than 2010-12-23 |
| 87 | 1.2.2.8 | 项目例会(每周四上午) 8 | 1d | 2010-12-30 | 2010-12-30 | 0d | start no earlier than 2010-12-30 |
